# 500V实际进度

Schedule from a web Gantt chart, 2025-07-23 to 2026-03-15.
Every day is a working day

## Schedule

| ID | WBS | Task | Duration | Start | Finish | Predecessors | Complete | Status |
| --- | --- | --- | --- | --- | --- | --- | --- | --- |
| 2 | 1 | 500V NPI进度 | 177d | 2025-07-23 | 2026-01-15 |  |  |  |
| 3 | 2 | Kick-off | 4d | 2025-07-23 | 2025-07-26 |  | 100% | done |
| 4 | 3 | Design & Layout；EPI | 4d | 2025-07-27 | 2025-07-30 | 3 | 100% | done |
| 5 | 4 | T/O & MaskShip；Flow Setup | 4d | 2025-07-31 | 2025-08-03 | 4 | 100% | done |
| 6 | 5 | Fab Process | 25d | 2025-08-04 | 2025-08-28 | 5 | 100% | done |
| 7 | 6 | CP Test HW &CP test&WLRE | 15d | 2025-08-29 | 2025-09-12 | 6 | 100% | done |
| 8 | 7 | Assembly+FT Test | 50d | 2025-09-13 | 2025-11-01 | 7 | 100% | done |
| 9 | 8 | **RB小管FT测试漏电** | 76d | 2025-12-30 | 2026-03-15 |  | 22% |  |
| 10 | 8.1 | RB小管漏电--封装验证 | 27d | 2025-12-30 | 2026-01-25 |  | 50% |  |
| 11 | 8.2 | RB小管漏电--小管位置设计 | 60d | 2026-01-15 | 2026-03-15 |  | 10% | waiting |
| 12 | 9 | **PI空洞** | 57d | 2025-11-18 | 2026-01-13 |  | 100% |  |
| 13 | 9.1 | FA分析PI空洞 | 23d | 2025-11-18 | 2025-12-10 |  | 100% |  |
| 14 | 9.2 | 恶化试验减小Space可复现异常 | 26d | 2025-12-11 | 2026-01-05 |  | 100% |  |
| 15 | 9.3 | Space加大到5um,2片wafer都没有异常 | 8d | 2026-01-06 | 2026-01-13 |  | 100% |  |
| 16 | 10 | Datasheet/Dy-Idsat | 9d | 2025-11-02 | 2025-11-10 | 8 |  | waiting |
| 17 | 11 | Datasheet测试 | 5d | 2026-01-12 | 2026-01-16 |  |  |  |
| 18 | 12 | AE Roadtest | 1d | 2025-11-02 | 2025-11-02 | 8 | 100% | done |
| 19 | 13 | AE测第二批Roadtest，关注Idsat，dRon | 12d | 2026-01-12 | 2026-01-23 |  |  |  |
| 20 | 14 | **RE** | 70d | 2025-11-07 | 2026-01-15 |  |  | waiting |
| 21 | 14.1 | RE168h (Device) | 11d | 2025-11-07 | 2025-11-17 |  |  | waiting |
| 22 | 14.2 | RE500h (Device) | 25d | 2025-11-07 | 2025-12-01 |  |  | waiting |
| 23 | 14.3 | RE1000h (Device) | 70d | 2025-11-07 | 2026-01-15 |  |  | waiting |
| 24 | 15 | **RE** | 45d | 2026-01-12 | 2026-02-25 |  |  |  |
| 25 | 15.1 | RE168h | 8d | 2026-01-14 | 2026-01-21 |  |  |  |
| 26 | 15.2 | RE500h | 22d | 2026-01-14 | 2026-02-04 |  |  |  |
| 27 | 15.3 | RE1000h | 43d | 2026-01-14 | 2026-02-25 |  |  |  |
| 28 | 15.4 | CRE动态测试Idsat,dRon | 12d | 2026-01-12 | 2026-01-23 |  |  |  |
